# SDK 3.2

Schedule from MS Project, 2006-05-16 to 2006-12-22, A marks actual dates.
Ekagra

## Calendars

- Standard: Mon-Fri 08:00-12:00, 13:00-17:00; Sat-Sun off. Exceptions (off unless hours are given): 2006-05-29, 2006-07-04, 2006-09-04, 2006-11-23.

## Resources

| Resource |
| --- |
| Denise Warzel |
| Charles Griffin |
| Steven Hunter |
| Avinash |
| JJ Maurer |
| Sharon S. |
| Satish Patel |
| Doug Mason |
| caAdapter Team |
| Dan Dumitru |
| QA |
| V |
| Tech Writing NCICB |
| SDK Users |
| SAIC |
| Orlando |
| Kunal |

## Schedule

| ID | WBS | Task | Type | Duration | Start | Finish | Predecessors | Complete | Remaining | Total slack | Constraint | Deadline | Resources | Work | Actual work |
| --- | --- | --- | --- | --- | --- | --- | --- | --- | --- | --- | --- | --- | --- | --- | --- |
| 1 | 1 | Project startup | milestone | 0d | 2006-05-23 A | 2006-05-23 A |  | 100% |  |  |  |  |  |  |  |
| 2 | 2 | **Inception** |  | 22d | 2006-05-23 A | 2006-06-22 A |  | 100% |  |  |  |  |  | 600h | 600h |
| 3 | 2.1 | Short term Inception plan |  | 2d | 2006-05-23 A | 2006-05-24 A | 1 | 100% |  |  |  |  | Charles Griffin | 16h | 16h |
| 4 | 2.2 | Project infrastructure set up |  | 2d | 2006-05-23 A | 2006-05-24 A | 3 | 100% |  |  |  |  | Satish Patel; Charles Griffin | 32h | 32h |
| 5 | 2.3 | Transition repository from incumbent team |  | 5d | 2006-05-23 A | 2006-05-30 A | 3 | 100% |  |  |  |  | Satish Patel | 40h | 40h |
| 6 | 2.4 | Scope and requirement review |  | 5d | 2006-05-23 A | 2006-05-30 A | 4 | 100% |  |  |  |  | Avinash; Charles Griffin | 80h | 80h |
| 7 | 2.5 | Project plan development |  | 4d | 2006-05-23 A | 2006-05-26 A | 1 | 100% |  |  |  |  | JJ Maurer; Charles Griffin | 64h | 64h |
| 8 | 2.6 | Project Plan Draft (C1.C1 Draft) | milestone | 0d | 2006-05-26 A | 2006-05-26 A |  | 100% |  |  | start no earlier than 2006-05-26 | 2006-05-26 | JJ Maurer; Charles Griffin |  |  |
| 9 | 2.7 | NCICB review of draft project plan |  | 2d | 2006-05-26 A | 2006-05-30 A | 8 | 100% |  |  |  |  | Avinash; Denise Warzel | 32h | 32h |
| 10 | 2.8 | Requirements analysis and grouping |  | 1d | 2006-05-31 A | 2006-05-31 A | 6 | 100% |  |  |  |  | Charles Griffin; JJ Maurer | 16h | 16h |
| 11 | 2.9 | Schedule Transition Meetings |  | 1d | 2006-06-01 A | 2006-06-01 A | 10 | 100% |  |  |  |  | Charles Griffin; Satish Patel | 16h | 16h |
| 12 | 2.10 | Risk analysis |  | 1d | 2006-06-02 A | 2006-06-02 A | 11 | 100% |  |  |  |  | Charles Griffin | 8h | 8h |
| 13 | 2.11 | Scope document preparation |  | 6d | 2006-06-05 A | 2006-06-12 A | 12 | 100% |  |  |  |  | Charles Griffin | 48h | 48h |
| 14 | 2.12 | Project Plan Final (C1.C1. Final) | milestone | 0d | 2006-06-05 A | 2006-06-05 A |  | 100% |  |  | start no earlier than 2006-06-05 | 2006-06-05 | Charles Griffin |  |  |
| 15 | 2.13 | Overall Iteration plan and schedule |  | 1d | 2006-06-05 A | 2006-06-05 A | 14 | 100% |  |  |  |  | Charles Griffin | 8h | 8h |
| 16 | 2.14 | Scope document Draft |  | 1d | 2006-06-06 A | 2006-06-06 A | 15 | 100% |  |  |  |  | Charles Griffin; Satish Patel | 16h | 16h |
| 17 | 2.15 | QA and internal review |  | 2d | 2006-06-07 A | 2006-06-08 A | 16 | 100% |  |  |  |  | Steven Hunter; JJ Maurer | 32h | 32h |
| 18 | 2.16 | Deliver draft scope document, iteration plan, risk list | milestone | 0d | 2006-06-08 A | 2006-06-08 A | 17 | 100% |  |  |  |  | Charles Griffin |  |  |
| 19 | 2.17 | NCICB review |  | 10d | 2006-06-09 A | 2006-06-22 A | 18 | 100% |  |  |  |  | Avinash; Denise Warzel | 160h | 160h |
| 20 | 2.18 | Transition Checkpoint Review Meeting | milestone | 0d | 2006-06-14 A | 2006-06-14 A |  | 100% |  |  | start no earlier than 2006-06-14 |  | Avinash; JJ Maurer; Charles Griffin; Sharon S. |  |  |
| 21 | 2.19 | Revise scope and iteration plan |  | 3d | 2006-06-14 A | 2006-06-16 A | 20 | 100% |  |  |  |  | Charles Griffin | 24h | 24h |
| 22 | 2.20 | Final scope document |  | 1d | 2006-06-19 A | 2006-06-19 A | 21 | 100% |  |  |  |  | Charles Griffin | 8h | 8h |
| 23 | 3 | **Elaboration** |  | 51d | 2006-06-01 A | 2006-08-11 |  | 81% | 9.48d | 93d |  |  |  | 1186.2h | 974.2h |
| 24 | 3.1 | **Iteration 1** |  | 49d | 2006-06-01 A | 2006-08-09 |  | 96% | 2.1d | 95d |  |  |  | 1014.2h | 974.2h |
| 25 | 3.1.1 | Detailed Plan for Elaboration |  | 1d | 2006-06-06 A | 2006-06-06 A | 15 | 100% |  |  |  |  | Charles Griffin | 8h | 8h |
| 26 | 3.1.2 | Develop Candidate Requirements Document |  | 1d | 2006-06-07 A | 2006-06-07 A | 25 | 100% |  |  |  |  | Charles Griffin | 8h | 8h |

| ID | WBS | Task | Type | Duration | Start | Finish | Predecessors | Complete | Total slack | Constraint | Deadline | Resources | Work | Actual work |
| --- | --- | --- | --- | --- | --- | --- | --- | --- | --- | --- | --- | --- | --- | --- |
| 27 | 3.1.3 | **Analysis and requirement gathering/LOEs** |  | 6.75d | 2006-06-01 A | 2006-06-09 A | 10 | 100% |  |  |  | Satish Patel | 110.2h | 110.2h |
| 28 | 3.1.3.1 | Exception Handling |  | 1d | 2006-06-01 A | 2006-06-01 A |  | 100% |  |  |  | Satish Patel | 8h | 8h |
| 29 | 3.1.3.2 | Meet With caAdapter Team |  | 0.25d | 2006-06-02 A | 2006-06-02 A | 28 | 100% |  | start no earlier than 2006-06-01 |  | Charles Griffin [10%]; Satish Patel; caAdapter Team | 4.2h | 4.2h |
| 30 | 3.1.3.3 | caAdapter Support |  | 1d | 2006-06-02 A | 2006-06-05 A | 29 | 100% |  |  |  | Satish Patel | 8h | 8h |
| 31 | 3.1.3.4 | Junit Framework |  | 1d | 2006-06-05 A | 2006-06-06 A | 30 | 100% |  | start no earlier than 2006-06-05 |  | Satish Patel | 8h | 8h |
| 32 | 3.1.3.5 | Castor XML Serialization |  | 1d | 2006-06-06 A | 2006-06-07 A | 31 | 100% |  |  |  | Satish Patel | 8h | 8h |
| 33 | 3.1.3.6 | caCore Dependency Removal |  | 0.5d | 2006-06-07 A | 2006-06-07 A | 32 | 100% |  |  |  | Satish Patel | 4h | 4h |
| 34 | 3.1.3.7 | Query Performance |  | 1d | 2006-06-07 A | 2006-06-08 A | 33 | 100% |  |  |  | Satish Patel | 8h | 8h |
| 35 | 3.1.3.8 | Identify Technical Document Deliverables |  | 1d | 2006-06-08 A | 2006-06-09 A | 34 | 100% |  |  |  | Satish Patel | 8h | 8h |
| 36 | 3.1.4 | Create Scope Document Draft |  | 5d | 2006-06-05 A | 2006-06-09 A |  | 100% |  | start no earlier than 2006-06-05 |  | Charles Griffin | 40h | 40h |
| 37 | 3.1.5 | Revised Scope Document Complete | milestone | 0d | 2006-06-13 A | 2006-06-13 A |  | 100% |  | start no earlier than 2006-06-13 |  |  |  |  |
| 38 | 3.1.6 | Revise PM Project Plan |  | 6d | 2006-06-12 A | 2006-06-19 A | 36 | 100% |  |  |  | Charles Griffin | 48h | 48h |
| 39 | 3.1.7 | Revised PM Project Plan Submitted | milestone | 0d | 2006-06-19 A | 2006-06-19 A |  | 100% |  | start no earlier than 2006-06-19 |  |  |  |  |
| 40 | 3.1.8 | Write General Design |  | 6d | 2006-06-09 A | 2006-06-19 A | 35 | 100% |  |  |  | Satish Patel | 48h | 48h |
| 41 | 3.1.9 | General Design Doc Posted for Review | milestone | 0d | 2006-06-19 A | 2006-06-19 A |  | 100% |  | start no earlier than 2006-06-19 |  |  |  |  |
| 42 | 3.1.10 | UML Model Changes Approved | milestone | 0d | 2006-06-30 A | 2006-06-30 A |  | 100% |  | start no earlier than 2006-06-30 |  | Avinash; Denise Warzel |  |  |
| 43 | 3.1.11 | Develop Use Case model and Supp Spec |  | 5d | 2006-06-19 A | 2006-06-26 A | 40 | 100% |  |  |  | Satish Patel | 40h | 40h |
| 44 | 3.1.12 | QA and internal review |  | 5d | 2006-06-26 | 2006-07-03 | 43 |  | 226.25d |  |  | Charles Griffin | 40h |  |
| 45 | 3.1.13 | Deliver Draft overall Requirements document (C1.C2 draft) | milestone | 0d | 2006-07-13 A | 2006-07-13 A |  | 100% |  | start no earlier than 2006-07-13 | 2006-07-14 | Charles Griffin |  |  |
| 46 | 3.1.14 | Develop Test approach |  | 5d | 2006-07-13 A | 2006-07-19 A | 45 | 100% |  |  |  | QA | 40h | 40h |
| 47 | 3.1.15 | Final 3.2 Scope/Project Plan to Gforge | milestone | 0d | 2006-06-26 A | 2006-06-26 A |  | 100% |  | start no earlier than 2006-06-26 |  |  |  |  |
| 48 | 3.1.16 | Deliver Final overall Requirements document (c1.C2 Final) | milestone | 0d | 2006-07-26 | 2006-07-26 | 45FS+10d |  | 14d | start no earlier than 2006-06-27 | 2006-08-15 | Charles Griffin |  |  |
| 49 | 3.1.17 | Prepare Designs for integration with NCICB tools |  | 4d | 2006-06-26 A | 2006-06-30 A | 43 | 100% |  |  |  | Satish Patel | 32h | 32h |
| 50 | 3.1.18 | Deliver draft design for tool integration (Group 1, C1.C6 Draft) | milestone | 0d | 2006-06-30 A | 2006-06-30 A | 49 | 100% |  |  | 2006-08-15 |  |  |  |
| 51 | 3.1.19 | NCICB review |  | 10d | 2006-06-30 A | 2006-07-17 A | 50 | 100% |  |  |  | Avinash | 80h | 80h |
| 52 | 3.1.20 | Revise design |  | 5d | 2006-07-17 A | 2006-07-24 A | 51 | 100% |  |  |  | Satish Patel | 40h | 40h |
| 53 | 3.1.21 | Deliver Final design for tool integration (Group 1, C1.C6 Final)) | milestone | 0d | 2006-07-31 A | 2006-07-31 A | 52 | 100% |  | start no earlier than 2006-07-31 | 2006-09-15 |  |  |  |

| ID | WBS | Task | Type | Duration | Start | Finish | Predecessors | Complete | Total slack | Free slack | Constraint | Deadline | Resources | Work | Actual work |
| --- | --- | --- | --- | --- | --- | --- | --- | --- | --- | --- | --- | --- | --- | --- | --- |
| 54 | 3.1.22 | **Software Architecture Documentation** |  | 20d | 2006-06-30 A | 2006-07-31 A |  | 100% |  |  |  |  |  | 320h | 320h |
| 55 | 3.1.22.1 | **Software Architecture Document - Code Generation** |  | 20d | 2006-06-30 A | 2006-07-31 A |  | 100% |  |  |  |  |  | 160h | 160h |
| 56 | 3.1.22.1.1 | Build process/Design Thick Client Jar |  | 3d | 2006-06-30 A | 2006-07-06 A | 50 | 100% |  |  |  |  | Satish Patel | 24h | 24h |
| 57 | 3.1.22.1.2 | Baseline draft build process/thick client jar design | milestone | 0d | 2006-07-06 A | 2006-07-06 A | 56 | 100% |  |  |  |  |  |  |  |
| 58 | 3.1.22.1.3 | Code generation framework |  | 15d | 2006-07-06 A | 2006-07-27 A | 56 | 100% |  |  |  |  | Satish Patel | 120h | 120h |
| 59 | 3.1.22.1.4 | Baseline draft code generation framework design | milestone | 0d | 2006-07-27 A | 2006-07-27 A | 58 | 100% |  |  |  |  |  |  |  |
| 60 | 3.1.22.1.5 | Modeling constraints |  | 2d | 2006-07-27 A | 2006-07-31 A | 58 | 100% |  |  |  |  | Satish Patel | 16h | 16h |
| 61 | 3.1.22.1.6 | Baseline draft modeling constraint | milestone | 0d | 2006-07-31 A | 2006-07-31 A | 60 | 100% |  |  |  |  |  |  |  |
| 62 | 3.1.22.2 | **Software Architecture Document - Generated System** |  | 20d | 2006-06-30 A | 2006-07-31 A |  | 100% |  |  |  |  |  | 160h | 160h |
| 63 | 3.1.22.2.1 | Exception handling |  | 6d | 2006-06-30 A | 2006-07-11 A | 50 | 100% |  |  |  |  | Dan Dumitru | 48h | 48h |
| 64 | 3.1.22.2.2 | Baseline draft exception handling design | milestone | 0d | 2006-07-11 A | 2006-07-11 A | 63 | 100% |  |  |  |  |  |  |  |
| 65 | 3.1.22.2.3 | Persistence tier design |  | 7d | 2006-07-11 A | 2006-07-20 A | 64 | 100% |  |  |  |  | Dan Dumitru | 56h | 56h |
| 66 | 3.1.22.2.4 | Baseline draft persistence design | milestone | 0d | 2006-07-20 A | 2006-07-20 A | 65 | 100% |  |  |  |  |  |  |  |
| 67 | 3.1.22.2.5 | Query mechanism design |  | 7d | 2006-07-20 A | 2006-07-31 A | 66 | 100% |  |  |  |  | Dan Dumitru | 56h | 56h |
| 68 | 3.1.22.2.6 | Baseline draft query mechanism design | milestone | 0d | 2006-07-31 A | 2006-07-31 A | 67 | 100% |  |  |  |  |  |  |  |
| 69 | 3.1.22.2.7 | Baseline draft writable API design | milestone | 0d | 2006-07-31 A | 2006-07-31 A | 68 | 100% |  |  |  |  |  |  |  |
| 70 | 3.1.23 | Deliver Draft Software Design for SDK enhancements (C1.C3 Draft) | milestone | 0d | 2006-07-18 A | 2006-07-18 A | 57, 64 | 100% |  |  | start no earlier than 2006-07-18 | 2006-09-15 |  |  |  |
| 71 | 3.1.24 | NCICB review |  | 10d | 2006-07-18 A | 2006-07-31 A | 70 | 100% |  |  |  |  | Avinash | 80h | 80h |
| 72 | 3.1.25 | Revise/Update design |  | 5d | 2006-08-01 A | 2006-08-07 A | 71 | 100% |  |  |  |  | Dan Dumitru; Satish Patel | 80h | 80h |
| 73 | 3.1.26 | Deliver Final Software design for SDK enhancements (Group 2,3) (C1.C3, final) | milestone | 0d | 2006-08-08 A | 2006-08-08 A | 72 | 100% |  |  | start no earlier than 2006-08-08 | 2006-10-13 |  |  |  |
| 74 | 3.1.27 | Review/Revise Task Plan |  | 2d | 2006-08-08 A | 2006-08-09 A | 73 | 100% |  |  |  |  |  |  |  |
| 75 | 3.2 | **Iteration 2** |  | 22d | 2006-07-13 | 2006-08-11 |  |  | 93d |  |  |  |  | 172h |  |
| 76 | 3.2.1 | Test Plan Development Intial Template Draft |  | 15d | 2006-07-13 | 2006-08-02 | 45 |  | 99.5d | 0d | start no earlier than 2006-06-21 |  | QA | 120h |  |
| 77 | 3.2.2 | Test Plan Review |  | 0.5d | 2006-08-03 | 2006-08-03 | 76 |  | 99.5d | 0d | start no earlier than 2006-07-05 |  | Charles Griffin; QA; Avinash | 12h |  |
| 78 | 3.2.3 | Revise test plan |  | 3d | 2006-08-03 | 2006-08-08 | 77 |  | 199.5d | 0d |  |  | QA | 24h |  |
| 79 | 3.2.4 | Test Plan Baselined | milestone | 0d | 2006-08-08 | 2006-08-08 | 78 |  | 199.5d | 1.5d |  |  | QA |  |  |
| 80 | 3.2.5 | Review/Revise Task Plan |  | 2d | 2006-08-10 | 2006-08-11 | 79, 74 |  | 198d |  |  |  | Charles Griffin | 16h |  |

| ID | WBS | Task | Type | Duration | Start | Finish | Predecessors | Complete | Remaining | Total slack | Constraint | Resources | Work | Actual work |
| --- | --- | --- | --- | --- | --- | --- | --- | --- | --- | --- | --- | --- | --- | --- |
| 81 | 4 | **Construction** |  | 114d | 2006-06-16 A | 2006-11-28 |  | 52% | 55.28d | 19d |  |  | 1552h | 692h |
| 82 | 4.1 | **Development** |  | 114d | 2006-06-16 A | 2006-11-28 |  | 52% | 55.28d | 19d |  |  | 1552h | 692h |
| 83 | 4.1.1 | **Iteration 0.5** |  | 10d | 2006-06-16 A | 2006-06-29 A |  | 100% |  |  |  |  | 160h | 160h |
| 84 | 4.1.1.1 | Code baselined | milestone | 0d | 2006-06-16 A | 2006-06-16 A |  | 100% |  |  | start no earlier than 2006-06-16 | Doug Mason |  |  |
| 85 | 4.1.1.2 | **QA Test** |  | 10d | 2006-06-16 A | 2006-06-29 A | 84 | 100% |  |  |  |  | 160h | 160h |
| 86 | 4.1.1.2.1 | QA test (Code Separation, 1.4 backward compatability, Hibernate 3.1 Upgrade |  | 10d | 2006-06-16 A | 2006-06-29 A |  | 100% |  |  |  | QA | 80h | 80h |
| 87 | 4.1.1.2.2 | QA Support |  | 10d | 2006-06-16 A | 2006-06-29 A |  | 100% |  |  |  | Doug Mason | 80h | 80h |
| 88 | 4.1.2 | **Iteration 1** |  | 35.5d | 2006-07-31 A | 2006-09-20 |  | 91% | 3.09d | 66.75d |  |  | 584h | 512h |
| 89 | 4.1.2.1 | **Technology Stack Upgrade** |  | 6d | 2006-07-31 A | 2006-08-08 A | 54 | 100% |  |  |  |  | 48h | 48h |
| 90 | 4.1.2.1.1 | Design |  | 1d | 2006-07-31 A | 2006-08-01 A |  | 100% |  |  |  | Satish Patel | 8h | 8h |
| 91 | 4.1.2.1.2 | Code/Unit Test |  | 5d | 2006-08-01 A | 2006-08-08 A | 90 | 100% |  |  |  | Satish Patel | 40h | 40h |
| 92 | 4.1.2.2 | **BootCamp Support** |  | 2d | 2006-08-08 A | 2006-08-10 A |  | 100% |  |  |  |  | 16h | 16h |
| 93 | 4.1.2.2.1 | Support by Satish |  | 2d | 2006-08-08 A | 2006-08-10 A | 89 | 100% |  |  |  | Satish Patel | 16h | 16h |
| 94 | 4.1.2.2 | **Fix WS ability to retrieve objects which have more than** |  | 15d | 2006-08-10 A | 2006-08-31 A |  | 100% |  |  |  |  | 120h | 120h |
| 95 | 4.1.2.2.1 | Design |  | 2d | 2006-08-10 A | 2006-08-14 A | 92 | 100% |  |  |  | Satish Patel | 16h | 16h |
| 96 | 4.1.2.2.2 | Code/Unit Test |  | 13d | 2006-08-14 A | 2006-08-31 A | 95 | 100% |  |  |  | Satish Patel | 104h | 104h |
| 97 | 4.1.2.3 | **Fix CORESystem.properties not loading on client side** |  | 3.5d | 2006-08-31 A | 2006-09-07 A |  | 100% |  |  |  |  | 28h | 28h |
| 98 | 4.1.2.3.1 | Design |  | 0.5d | 2006-08-31 A | 2006-09-01 A | 94 | 100% |  |  |  | Satish Patel | 4h | 4h |
| 99 | 4.1.2.3.2 | Code/Unit Test |  | 3d | 2006-09-01 A | 2006-09-07 A | 98 | 100% |  |  |  | Satish Patel | 24h | 24h |
| 100 | 4.1.2.4 | **Performance Bench Marking/Improvements (Run Time)/Massive Query Defect** |  | 16.5d | 2006-08-18 A | 2006-09-13 A | 109, 54 | 100% |  |  |  |  | 140h | 140h |
| 101 | 4.1.2.4.1 | Define Approach/Documentation |  | 1d | 2006-08-18 A | 2006-08-21 A |  | 100% |  |  |  | Dan Dumitru | 8h | 8h |
| 102 | 4.1.2.4.2 | Perform Benchmarking |  | 6d | 2006-08-21 A | 2006-08-29 A | 101 | 100% |  |  |  | Dan Dumitru | 48h | 48h |
| 103 | 4.1.2.4.3 | Define Resolution Strategy |  | 3d | 2006-08-29 A | 2006-09-01 A | 102 | 100% |  |  |  | Dan Dumitru | 24h | 24h |
| 104 | 4.1.2.4.4 | Review Strategy/Design and Decide upon 3.2 fixes |  | 0.5d | 2006-09-01 A | 2006-09-05 A | 103 | 100% |  |  |  | Avinash; Charles Griffin; Dan Dumitru | 12h | 12h |
| 105 | 4.1.2.4.5 | Implement Fixes |  | 6d | 2006-09-05 A | 2006-09-13 A | 104 | 100% |  |  |  | Dan Dumitru | 48h | 48h |

| ID | WBS | Task | Type | Duration | Start | Finish | Predecessors | Complete | Remaining | Total slack | Free slack | Constraint | Resources | Work | Actual work |
| --- | --- | --- | --- | --- | --- | --- | --- | --- | --- | --- | --- | --- | --- | --- | --- |
| 106 | 4.1.2.5 | **Generate "Thick" Client .jar and Build Script Rewrite** |  | 6d | 2006-09-07 A | 2006-09-15 A |  | 100% |  |  |  |  |  | 48h | 48h |
| 107 | 4.1.2.5.1 | Design |  | 1d | 2006-09-07 A | 2006-09-08 A | 97 | 100% |  |  |  |  | Satish Patel | 8h | 8h |
| 108 | 4.1.2.5.2 | Code/Unit Test |  | 5d | 2006-09-08 A | 2006-09-15 A | 107 | 100% |  |  |  |  | Satish Patel | 40h | 40h |
| 109 | 4.1.2.6 | **Improve Exception Handling** |  | 14d | 2006-07-31 A | 2006-08-18 A |  | 100% |  |  |  |  |  | 112h | 112h |
| 110 | 4.1.2.6.1 | Design |  | 2d | 2006-07-31 A | 2006-08-02 A | 54 | 100% |  |  |  |  | Dan Dumitru | 16h | 16h |
| 111 | 4.1.2.6.2 | Code/Unit Test |  | 12d | 2006-08-02 A | 2006-08-18 A | 110 | 100% |  |  |  |  | Dan Dumitru | 96h | 96h |
| 112 | 4.1.2.7 | Construct/Unit Testing Complete | milestone | 0d | 2006-09-13 A | 2006-09-13 A |  | 100% |  |  |  | start no earlier than 2006-09-13 |  |  |  |
| 113 | 4.1.2.8 | **Testing** |  | 3d | 2006-09-15 | 2006-09-20 |  |  |  | 35.75d | 0d |  |  | 72h |  |
| 114 | 4.1.2.8.1 | QA Test Execution |  | 3d | 2006-09-15 | 2006-09-20 | 106, 100 |  |  | 138.75d |  |  | QA | 24h |  |
| 115 | 4.1.2.8.2 | Test Support |  | 3d | 2006-09-15 | 2006-09-20 | 106, 100 |  |  | 138.75d |  |  | Satish Patel; Dan Dumitru | 48h |  |
| 116 | 4.1.2.9 | Iteration 1 Dev/QA Complete | milestone | 0d | 2006-09-18 | 2006-09-18 |  |  |  | 174d |  | start no earlier than 2006-09-18 |  |  |  |
| 117 | 4.1.3 | **Iteration 2** |  | 15d | 2006-09-20 A | 2006-10-11 |  | 12% | 13.21d | 51.75d |  |  |  | 168h | 20h |
| 118 | 4.1.3.1 | **Composition (#2546)** |  | 3d | 2006-09-20 | 2006-09-25 | 113 |  |  | 38.25d | 0.75d |  |  | 24h |  |
| 119 | 4.1.3.1.1 | Design |  | 3d | 2006-09-20 | 2006-09-25 |  |  |  | 38.25d |  |  | Satish Patel | 24h |  |
| 120 | 4.1.3.2 | **One to one association naming problem and Super Class Package Defect** |  | 2.5d | 2006-09-26 A | 2006-09-28 |  | 40% | 1.5d | 36.5d | 0d |  |  | 20h | 8h |
| 121 | 4.1.3.2.1 | Code/Unit Test |  | 2.5d | 2006-09-26 A | 2006-09-28 | 118 | 40% | 1.5d | 36.5d |  |  | Satish Patel | 20h | 8h |
| 122 | 4.1.3.3 | **Expand Junit and automated testing framework** |  | 12d | 2006-09-20 A | 2006-10-06 |  | 13% | 10.5d | 34.25d | 0d |  |  | 96h | 12h |
| 123 | 4.1.3.3.1 | Analysis |  | 2d | 2006-09-20 A | 2006-09-22 | 113 | 75% | 0.5d | 64.75d | 0d |  | Dan Dumitru | 16h | 12h |
| 124 | 4.1.3.3.2 | Code/Unit Test |  | 10d | 2006-09-22 | 2006-10-06 | 123 |  |  | 138.75d |  |  | Dan Dumitru | 80h |  |
| 125 | 4.1.3.4 | Construct/Unit Testing Complete | milestone | 0d | 2006-09-29 | 2006-09-29 |  |  |  | 165d |  | start no earlier than 2006-09-29 |  |  |  |
| 126 | 4.1.3.5 | **Testing** |  | 3d | 2006-10-06 | 2006-10-11 |  |  |  | 34.25d |  |  |  | 28h |  |
| 127 | 4.1.3.5.1 | QA Test Execution |  | 3d | 2006-10-06 | 2006-10-11 | 118, 122 |  |  | 138.75d |  |  | QA | 24h |  |
| 128 | 4.1.3.5.2 | Create QA Build |  | 0.5d | 2006-10-06 | 2006-10-06 | 122, 118 |  |  | 34.25d | 0d |  | Dan Dumitru | 4h |  |
| 129 | 4.1.3.6 | Iteration 2 Dev/QA Complete | milestone | 0d | 2006-10-03 | 2006-10-03 |  |  |  | 163d |  | start no earlier than 2006-10-03 |  |  |  |

| ID | WBS | Task | Type | Duration | Start | Finish | Predecessors | Total slack | Free slack | Constraint | Resources | Work |
| --- | --- | --- | --- | --- | --- | --- | --- | --- | --- | --- | --- | --- |
| 130 | 4.1.4 | **Iteration 3** |  | 41.5d | 2006-09-28 | 2006-11-28 |  | 19d |  |  |  | 640h |
| 131 | 4.1.4.1 | Package Name Support (Feature Request #1807) |  | 6d | 2006-10-12 | 2006-10-20 | 132 | 44.5d |  |  | Satish Patel | 48h |
| 132 | 4.1.4.2 | CQL Enhancement (#2896) |  | 10d | 2006-09-28 | 2006-10-12 | 120 | 36.5d | 0d |  | Satish Patel | 80h |
| 133 | 4.1.4.2 | Association Model as sequence (Defect #1311) |  | 6d | 2006-10-06 | 2006-10-16 | 128, 126 | 34.25d | 2.25d |  | Dan Dumitru | 48h |
| 134 | 4.1.4.3 | Construct/Unit Testing Complete | milestone | 0d | 2006-10-17 | 2006-10-17 |  | 153d |  | start no earlier than 2006-10-17 |  |  |
| 135 | 4.1.4.4 | **Testing** |  | 7d | 2006-10-17 | 2006-10-25 |  | 32d |  |  |  | 120h |
| 136 | 4.1.4.4.1 | Execute Tests |  | 5d | 2006-10-17 | 2006-10-23 | 134, 131, 133 | 34d |  |  | QA | 40h |
| 137 | 4.1.4.4.2 | Test Support |  | 5d | 2006-10-19 | 2006-10-25 | 133, 132, 131 | 32d | 0d | start no earlier than 2006-10-19 | Satish Patel; Dan Dumitru | 80h |
| 138 | 4.1.4.5 | Iteration 3 Dev/QA Complete | milestone | 0d | 2006-10-20 | 2006-10-20 |  | 150d |  | start no earlier than 2006-10-20 |  |  |
| 139 | 4.1.4.7 | **Documentation** |  | 5d | 2006-10-26 | 2006-11-01 |  | 5d |  |  |  | 80h |
| 140 | 4.1.4.7.1 | Write Draft Documentation/ Update User Guide |  | 5d | 2006-10-26 | 2006-11-01 | 137, 135 | 32d | 0d |  | Dan Dumitru; Satish Patel | 80h |
| 141 | 4.1.4.7.2 | Draft Documentation/User Documentation Completed | milestone | 0d | 2006-10-27 | 2006-10-27 |  | 109d | 0d | start no earlier than 2006-10-27 |  |  |
| 142 | 4.1.4.8 | Internal System Testing Complete (QA Tier) | milestone | 0d | 2006-11-01 | 2006-11-01 |  | 142d |  | start no earlier than 2006-11-01 |  |  |
| 143 | 4.1.4.9 | Push Candidate to Staging |  | 4d | 2006-11-02 | 2006-11-07 | 140 | 32d |  |  | Dan Dumitru; Satish Patel | 64h |
| 144 | 1.2.6 | Release Candidate pushed to Stage Tier | milestone | 0d | 2006-11-03 | 2006-11-03 |  | 130d | 0d | start no earlier than 2006-11-03 |  |  |
| 145 | 4.1.4.11 | **Regression Testing** |  | 5d | 2006-11-03 | 2006-11-09 |  | 25d | 0d |  |  | 120h |
| 146 | 4.1.4.11.1 | Execution |  | 5d | 2006-11-03 | 2006-11-09 | 144 | 130d |  |  | QA | 40h |
| 147 | 4.1.4.11.2 | Test Support |  | 5d | 2006-11-03 | 2006-11-09 | 144 | 130d |  |  | Dan Dumitru; Satish Patel | 80h |
| 148 | 4.1.4.12 | **UAT Testing** |  | 5d | 2006-11-10 | 2006-11-16 |  | 25d |  |  |  | 80h |
| 149 | 4.1.4.12.1 | Test Execution/Suppport |  | 5d | 2006-11-10 | 2006-11-16 | 145 | 130d |  |  | Dan Dumitru; Satish Patel | 80h |
| 150 | 1.2.7 | UAT Complete | milestone | 0d | 2006-11-28 | 2006-11-28 |  | 124d |  | start no earlier than 2006-11-28 |  |  |
| 151 | 5 | **Transition** |  | 39d | 2006-10-27 | 2006-12-22 |  | 1d |  |  |  | 600h |
| 152 | 5.1 | **Documentation** |  | 35d | 2006-10-27 | 2006-12-15 |  | 4d |  |  |  | 360h |
| 153 | 5.1.1 | Review Technical/User Docs |  | 11d | 2006-10-27 | 2006-11-10 | 141 | 109d | 0d |  | Tech Writing NCICB | 88h |
| 154 | 5.1.2 | Review Technical/User Docs Complete | milestone | 0d | 2006-11-10 | 2006-11-10 |  | 135d |  | start no earlier than 2006-11-10 |  |  |
| 155 | 5.1.3 | Incorporate Comments to User Docs |  | 10d | 2006-11-13 | 2006-11-27 | 153 | 109d | 0d |  | Dan Dumitru; Satish Patel | 160h |
| 156 | 5.1.4 | Incorporate Comments to User Docs Complete | milestone | 0d | 2006-11-28 | 2006-11-28 |  | 124d |  | start no earlier than 2006-11-28 |  |  |
| 157 | 5.1.5 | Finalize Documents |  | 14d | 2006-11-28 | 2006-12-15 | 155 | 110d |  |  | Tech Writing NCICB | 112h |
| 158 | 5.1.6 | Final Version of User Documents Complete | milestone | 0d | 2006-12-15 | 2006-12-15 |  | 111d |  | start no earlier than 2006-12-15 |  |  |
| 159 | 5.2 | Staging |  | 15d | 2006-11-28 | 2006-12-18 | 155 | 109d |  |  | Dan Dumitru; Satish Patel | 240h |
| 160 | 1.3.2 | Internal Staging Complete | milestone | 0d | 2006-12-19 | 2006-12-19 |  | 109d |  | start no earlier than 2006-12-19 |  |  |
| 161 | 1.3.3 | Push to Production | milestone | 0d | 2006-12-21 | 2006-12-21 |  | 107d |  | start no earlier than 2006-12-21 |  |  |
| 162 | 5.5 | Go Live | milestone | 0d | 2006-12-22 | 2006-12-22 |  | 106d |  | start no earlier than 2006-12-22 |  |  |

Notes:
- 140: The draft will be completed 4 days after the Draft Documentation/User Documentation Completed milestone due to limited resources. This was approved by Avinash and the documentation team.

| ID | WBS | Task | Duration | Start | Finish | Predecessors | Total slack | Constraint | Resources | Work |
| --- | --- | --- | --- | --- | --- | --- | --- | --- | --- | --- |
| 166 | 6 | **Ongoing tasks** | 155d | 2006-05-16 | 2006-12-22 |  | 0d |  |  | 2800h |
| 167 | 6.1 | Support for SDK users/Support caBIG community | 140d | 2006-06-07 | 2006-12-22 | 1 | 0d | finish no earlier than 2006-12-22 | Dan Dumitru [25%]; Satish Patel [25%] | 560h |
| 168 | 6.2 | Maintain defect/feature list | 140d | 2006-06-07 | 2006-12-22 | 1 | 0d | start no earlier than 2006-06-07 | Charles Griffin | 1120h |
| 169 | 6.3 | Prioritize fixes and enhancements for next iteration | 140d | 2006-06-07 | 2006-12-22 | 1 | 0d | start no earlier than 2006-06-07 | Charles Griffin | 1120h |
| 172 | 6.4 | **Monthly status reports** | 129d | 2006-06-08 | 2006-12-08 |  | 10d |  |  |  |
| 173 | 6.4.1 | Monthly status reports 1 | 1d | 2006-06-08 | 2006-06-08 |  | 138d | start no earlier than 2006-06-08 |  |  |
| 174 | 6.4.2 | Monthly status reports 2 | 1d | 2006-07-10 | 2006-07-10 |  | 117d | start no earlier than 2006-07-08 |  |  |
| 175 | 6.4.3 | Monthly status reports 3 | 1d | 2006-08-08 | 2006-08-08 |  | 96d | start no earlier than 2006-08-08 |  |  |
| 176 | 6.4.4 | Monthly status reports 4 | 1d | 2006-09-08 | 2006-09-08 |  | 74d | start no earlier than 2006-09-08 |  |  |
| 177 | 6.4.5 | Monthly status reports 5 | 1d | 2006-10-09 | 2006-10-09 |  | 53d | start no earlier than 2006-10-08 |  |  |
| 178 | 6.4.6 | Monthly status reports 6 | 1d | 2006-11-08 | 2006-11-08 |  | 31d | start no earlier than 2006-11-08 |  |  |
| 179 | 6.4.7 | Monthly status reports 7 | 1d | 2006-12-08 | 2006-12-08 |  | 10d | start no earlier than 2006-12-08 |  |  |
| 180 | 6.5 | **Weekly Project Plan update** | 152d | 2006-05-16 | 2006-12-19 |  | 3d |  |  |  |
| 181 | 6.5.1 | Weekly Project Plan update 1 | 1d | 2006-05-16 | 2006-05-16 |  | 154d | start no earlier than 2006-05-16 |  |  |
| 182 | 6.5.2 | Weekly Project Plan update 2 | 1d | 2006-05-23 | 2006-05-23 |  | 149d | start no earlier than 2006-05-23 |  |  |
| 183 | 6.5.3 | Weekly Project Plan update 3 | 1d | 2006-05-30 | 2006-05-30 |  | 145d | start no earlier than 2006-05-30 |  |  |
| 184 | 6.5.4 | Weekly Project Plan update 4 | 1d | 2006-06-06 | 2006-06-06 |  | 140d | start no earlier than 2006-06-06 |  |  |
| 185 | 6.5.5 | Weekly Project Plan update 5 | 1d | 2006-06-13 | 2006-06-13 |  | 135d | start no earlier than 2006-06-13 |  |  |
| 186 | 6.5.6 | Weekly Project Plan update 6 | 1d | 2006-06-20 | 2006-06-20 |  | 130d | start no earlier than 2006-06-20 |  |  |
| 187 | 6.5.7 | Weekly Project Plan update 7 | 1d | 2006-06-27 | 2006-06-27 |  | 125d | start no earlier than 2006-06-27 |  |  |
| 188 | 6.5.8 | Weekly Project Plan update 8 | 1d | 2006-07-05 | 2006-07-05 |  | 120d | start no earlier than 2006-07-04 |  |  |
| 189 | 6.5.9 | Weekly Project Plan update 9 | 1d | 2006-07-11 | 2006-07-11 |  | 116d | start no earlier than 2006-07-11 |  |  |
| 190 | 6.5.10 | Weekly Project Plan update 10 | 1d | 2006-07-18 | 2006-07-18 |  | 111d | start no earlier than 2006-07-18 |  |  |
| 191 | 6.5.11 | Weekly Project Plan update 11 | 1d | 2006-07-25 | 2006-07-25 |  | 106d | start no earlier than 2006-07-25 |  |  |
| 192 | 6.5.12 | Weekly Project Plan update 12 | 1d | 2006-08-01 | 2006-08-01 |  | 101d | start no earlier than 2006-08-01 |  |  |
| 193 | 6.5.13 | Weekly Project Plan update 13 | 1d | 2006-08-08 | 2006-08-08 |  | 96d | start no earlier than 2006-08-08 |  |  |
| 194 | 6.5.14 | Weekly Project Plan update 14 | 1d | 2006-08-15 | 2006-08-15 |  | 91d | start no earlier than 2006-08-15 |  |  |
| 195 | 6.5.15 | Weekly Project Plan update 15 | 1d | 2006-08-22 | 2006-08-22 |  | 86d | start no earlier than 2006-08-22 |  |  |
| 196 | 6.5.16 | Weekly Project Plan update 16 | 1d | 2006-08-29 | 2006-08-29 |  | 81d | start no earlier than 2006-08-29 |  |  |
| 197 | 6.5.17 | Weekly Project Plan update 17 | 1d | 2006-09-05 | 2006-09-05 |  | 77d | start no earlier than 2006-09-05 |  |  |
| 198 | 6.5.18 | Weekly Project Plan update 18 | 1d | 2006-09-12 | 2006-09-12 |  | 72d | start no earlier than 2006-09-12 |  |  |
| 199 | 6.5.19 | Weekly Project Plan update 19 | 1d | 2006-09-19 | 2006-09-19 |  | 67d | start no earlier than 2006-09-19 |  |  |
| 200 | 6.5.20 | Weekly Project Plan update 20 | 1d | 2006-09-26 | 2006-09-26 |  | 62d | start no earlier than 2006-09-26 |  |  |
| 201 | 6.5.21 | Weekly Project Plan update 21 | 1d | 2006-10-03 | 2006-10-03 |  | 57d | start no earlier than 2006-10-03 |  |  |
| 202 | 6.5.22 | Weekly Project Plan update 22 | 1d | 2006-10-10 | 2006-10-10 |  | 52d | start no earlier than 2006-10-10 |  |  |
| 203 | 6.5.23 | Weekly Project Plan update 23 | 1d | 2006-10-17 | 2006-10-17 |  | 47d | start no earlier than 2006-10-17 |  |  |
| 204 | 6.5.24 | Weekly Project Plan update 24 | 1d | 2006-10-24 | 2006-10-24 |  | 42d | start no earlier than 2006-10-24 |  |  |
| 205 | 6.5.25 | Weekly Project Plan update 25 | 1d | 2006-10-31 | 2006-10-31 |  | 37d | start no earlier than 2006-10-31 |  |  |
| 206 | 6.5.26 | Weekly Project Plan update 26 | 1d | 2006-11-07 | 2006-11-07 |  | 32d | start no earlier than 2006-11-07 |  |  |
| 207 | 6.5.27 | Weekly Project Plan update 27 | 1d | 2006-11-14 | 2006-11-14 |  | 27d | start no earlier than 2006-11-14 |  |  |
| 208 | 6.5.28 | Weekly Project Plan update 28 | 1d | 2006-11-21 | 2006-11-21 |  | 22d | start no earlier than 2006-11-21 |  |  |
| 209 | 6.5.29 | Weekly Project Plan update 29 | 1d | 2006-11-28 | 2006-11-28 |  | 18d | start no earlier than 2006-11-28 |  |  |
| 210 | 6.5.30 | Weekly Project Plan update 30 | 1d | 2006-12-05 | 2006-12-05 |  | 13d | start no earlier than 2006-12-05 |  |  |
| 211 | 6.5.31 | Weekly Project Plan update 31 | 1d | 2006-12-12 | 2006-12-12 |  | 8d | start no earlier than 2006-12-12 |  |  |
| 212 | 6.5.32 | Weekly Project Plan update 32 | 1d | 2006-12-19 | 2006-12-19 |  | 3d | start no earlier than 2006-12-19 |  |  |
